# OSG PKI Project

How a schedule from MS Project changed from version to version. A marks actual dates.

## Version 1 (saved 2012-04-03)

Note of the change: r1.1 pub/Operations/OSGPKIProjectWBS/OSG_PKI_Project_v0.1.mpp

| ID | WBS | Task | Duration | Start | Finish | Predecessors | Total float |
| --- | --- | --- | --- | --- | --- | --- | --- |
| 1 | 1 | **Planning Phase** | 40d | 2012-03-12 | 2012-05-04 |  | 0d |
| 2 |  | Document Technical Plan | 20d | 2012-03-12 | 2012-04-06 |  | 0d |
| 3 |  | Document Transition Plan | 20d | 2012-04-09 | 2012-05-04 | 2 | 100d |
| 4 |  | Document Communications Plan | 10d | 2012-04-09 | 2012-04-20 | 2 | 110d |
| 5 |  | Document Acceptance Test Plan | 20d | 2012-04-09 | 2012-05-04 | 2 | 0d |
| 6 |  | Document Training Plan | 10d | 2012-04-09 | 2012-04-20 | 2 | 105d |
| 7 |  | Develop WBS and Timeline | 5d | 2012-04-23 | 2012-04-27 | 6 | 105d |
| 8 | 2 | **Development Phase** | 115d | 2012-03-12 | 2012-08-17 |  | 35d |
| 9 | 2.1 | **Develop the OSG CA web service front-end and integrate with the DigiCert CA** | 60d | 2012-05-07 | 2012-07-27 |  | 0d |
| 10 |  | Develop software and associated documentation | 30d | 2012-05-07 | 2012-06-15 | 5 | 0d |
| 11 |  | Review by the OSG software area of the resulting code and support documentation. | 10d | 2012-06-18 | 2012-06-29 | 10 | 0d |
| 12 |  | Developer Testing of New Solutions | 20d | 2012-07-02 | 2012-07-27 | 11 | 0d |
| 13 |  | Define changes to operational procedures, policy and other changes defined in the Planning phase. | 15d | 2012-03-12 | 2012-03-30 |  | 110d |
| 14 |  | Define Contingency Plan elements for the event that the DigiCert CA becomes unavailable; and conduct an OSG internal review | 15d | 2012-04-02 | 2012-04-20 | 13 | 110d |
| 15 |  | Conduct Acceptance Testing of System | 15d | 2012-07-30 | 2012-08-17 | 12 | 0d |
| 16 |  | Update Transition Plan | 3d | 2012-07-30 | 2012-08-01 | 12 | 47d |
| 17 |  | Update Training Plan | 3d | 2012-07-30 | 2012-08-01 | 12 | 47d |
| 18 |  | Update Communications Plan | 3d | 2012-07-30 | 2012-08-01 | 12 | 47d |
| 19 | 3 | **Deployment Phase** | 50d | 2012-07-02 | 2012-09-07 |  | 20d |
| 20 |  | Execute Training Plan for OSG Staff | 15d | 2012-08-20 | 2012-09-07 | 15 | 20d |
| 21 | 3.2 | **Deploy the OSG CA - the OSG web front-end and operations components** | 50d | 2012-07-02 | 2012-09-07 |  | 20d |
| 22 |  | Procure Hardware | 10d | 2012-07-02 | 2012-07-13 | 11 | 50d |
| 23 |  | New Server Setup | 10d | 2012-07-16 | 2012-07-27 | 22 | 50d |
| 24 |  | Install Software | 5d | 2012-08-20 | 2012-08-24 | 15 | 0d |
| 25 |  | Friendly User Testing | 10d | 2012-08-27 | 2012-09-07 | 24 | 0d |
| 26 |  | Implement changes to operational procedures, policy and other changes defined in the Planning phase. | 10d | 2012-08-20 | 2012-08-31 | 15 | 25d |
| 27 |  | Implement contingency Plan elements for the event that the DigiCert CA becomes unavailable | 10d | 2012-08-20 | 2012-08-31 | 15 | 25d |
| 28 |  | Transfer new software packages ownership to OSG Software team | 5d | 2012-08-20 | 2012-08-24 | 15 | 30d |
| 29 | 4 | **Transition** | 20d | 2012-09-10 | 2012-10-05 |  | 0d |
| 30 |  | Execute Communications Plan | 4d | 2012-09-10 | 2012-09-13 | 25 | 16d |
| 31 |  | Execute Training Plan for User Community | 20d | 2012-09-10 | 2012-10-05 | 25 | 0d |

## Version 2 (saved 2012-04-05)

Note of the change: r1.3 pub/Operations/OSGPKIProjectWBS/OSG_PKI_Project_v0.1.mpp

Last finish 2012-10-05 → 2013-11-05 (+396d).

Added:

| ID | Task | Duration | Start | Finish | Predecessors |
| --- | --- | --- | --- | --- | --- |
| 8 | Finalize & Sign Contract between DigiCert & Indiana | 20d | 2012-04-23 | 2012-05-18 | 2 |
| 33 | Issue DigiCerts certs for "friendly" user community | 5d | 2012-10-01 | 2012-10-05 | 20 |
| 34 | Regression test OSG functionality using new Certs | 20d | 2012-10-08 | 2012-11-02 | 33 |
| 35 | Test End-to-End Contingency Plan | 20d | 2012-10-08 | 2012-11-02 | 33 |
| 36 | **First Year of Operations** | 262d | 2012-11-05 | 2013-11-05 |  |
| 37 | Stop issueing new certs from DOEGrids | 1d | 2012-11-05 | 2012-11-05 | 30 |
| 38 | Start issueing new and renewal certs from DigiCert | 1d | 2012-11-05 | 2012-11-05 | 30 |
| 39 | "Drain" all active certs from DOEGrids CA | 260d | 2012-11-06 | 2013-11-04 | 37 |
| 40 | Shut off DEOGrid CA | 1d | 2013-11-05 | 2013-11-05 | 39 |

Changed:

| ID | Task | Start | Finish | Duration | Total float | Predecessors | Other |
| --- | --- | --- | --- | --- | --- | --- | --- |
| 1 | **Planning Phase** |  | 2012-05-04 → 2012-05-18 (+14d) | 40d → 50d |  |  |  |
| 2 | Document Technical Plan |  | 2012-04-06 → 2012-04-20 (+14d) | 20d → 30d |  |  |  |
| 3 | Document Acceptance Test Plan | 2012-04-09 → 2012-04-23 (+14d) | 2012-05-04 → 2012-05-11 (+7d) | 20d → 15d |  |  |  |
| 4 | Document Transition Plan | 2012-04-09 → 2012-04-23 (+14d) | 2012-05-04 → 2012-05-11 (+7d) | 20d → 15d | 100d → 0d |  |  |
| 5 | Document Communications Plan | 2012-04-09 → 2012-04-23 (+14d) | 2012-04-20 → 2012-05-04 (+14d) |  | 110d → 5d |  |  |
| 6 | Document Training Plan | 2012-04-09 → 2012-04-23 (+14d) | 2012-04-20 → 2012-05-04 (+14d) |  | 105d → 5d |  |  |
| 7 | Baseline WBS and Timeline | 2012-04-23 → 2012-05-14 (+21d) | 2012-04-27 → 2012-05-18 (+21d) |  | 105d → 0d | 6 → 6, 2, 3, 4, 5 | was named Develop WBS and Timeline |
| 9 | **Development Phase** | 2012-03-12 → 2012-05-21 (+70d) | 2012-08-17 → 2012-08-31 (+14d) | 115d → 75d | 35d → 0d |  |  |
| 10 | **Develop the OSG CA web service front-end and integrate with the DigiCert CA** | 2012-05-07 → 2012-05-21 (+14d) | 2012-07-27 → 2012-08-10 (+14d) |  |  |  |  |
| 11 | Develop software and associated documentation | 2012-05-07 → 2012-05-21 (+14d) | 2012-06-15 → 2012-06-29 (+14d) |  |  | 3 → 1 |  |
| 12 | Review by the OSG software area of the resulting code and support documentation. | 2012-06-18 → 2012-07-02 (+14d) | 2012-06-29 → 2012-07-13 (+14d) |  |  |  |  |
| 13 | Developer Testing of New Solutions | 2012-07-02 → 2012-07-16 (+14d) | 2012-07-27 → 2012-08-10 (+14d) |  |  |  |  |
| 14 | Define changes to operational procedures, policy and other changes defined in the Planning phase. | 2012-03-12 → 2012-05-21 (+70d) | 2012-03-30 → 2012-06-08 (+70d) |  | 110d → 50d | none → 1 |  |
| 15 | Define Contingency Plan elements for the event that the DigiCert CA becomes unavailable; and conduct an OSG internal review | 2012-04-02 → 2012-06-11 (+70d) | 2012-04-20 → 2012-06-29 (+70d) |  | 110d → 50d |  |  |
| 16 | Conduct Acceptance Testing of System | 2012-07-30 → 2012-08-13 (+14d) | 2012-08-17 → 2012-08-31 (+14d) |  | 0d → 5d |  |  |
| 17 | Update Transition Plan | 2012-07-30 → 2012-08-13 (+14d) | 2012-08-01 → 2012-08-15 (+14d) |  | 47d → 17d |  |  |
| 18 | Update Training Plan | 2012-07-30 → 2012-08-13 (+14d) | 2012-08-01 → 2012-08-15 (+14d) |  | 47d → 17d |  |  |
| 19 | Update Communications Plan | 2012-07-30 → 2012-08-13 (+14d) | 2012-08-01 → 2012-08-15 (+14d) |  | 47d → 17d |  |  |
| 20 | **Deployment Phase** | 2012-07-02 → 2012-08-13 (+42d) | 2012-09-07 → 2012-09-28 (+21d) | 50d → 35d | 20d → 0d |  |  |
| 21 | **Deploy the OSG CA - the OSG web front-end and operations components** | 2012-07-02 → 2012-08-13 (+42d) | 2012-09-07 → 2012-09-28 (+21d) | 50d → 35d | 20d → 0d |  |  |
| 22 | Procure Hardware | 2012-07-02 → 2012-08-13 (+42d) | 2012-07-13 → 2012-08-31 (+49d) | 10d → 15d | 50d → 0d | 12 → 13 |  |
| 23 | New Server Setup | 2012-07-16 → 2012-09-03 (+49d) | 2012-07-27 → 2012-09-07 (+42d) | 10d → 5d | 50d → 0d |  |  |
| 24 | Install Software | 2012-08-20 → 2012-09-10 (+21d) | 2012-08-24 → 2012-09-14 (+21d) |  |  | 16 → 16, 23 |  |
| 25 | Friendly User Testing | 2012-08-27 → 2012-09-17 (+21d) | 2012-09-07 → 2012-09-28 (+21d) |  |  |  |  |
| 26 | Execute Training Plan for OSG Staff | 2012-08-20 → 2012-09-03 (+14d) | 2012-09-07 → 2012-09-21 (+14d) |  | 20d → 5d | 16 → 9 |  |
| 27 | Implement changes to operational procedures, policy and other changes defined in the Planning phase. | 2012-08-20 → 2012-09-03 (+14d) | 2012-08-31 → 2012-09-14 (+14d) |  | 25d → 10d | 16 → 9 |  |
| 28 | Implement contingency Plan elements for the event that the DigiCert CA becomes unavailable | 2012-08-20 → 2012-09-03 (+14d) | 2012-08-31 → 2012-09-14 (+14d) |  | 25d → 10d | 16 → 9 |  |
| 29 | Transfer new software packages ownership to OSG Software team | 2012-08-20 → 2012-09-03 (+14d) | 2012-08-24 → 2012-09-07 (+14d) |  | 30d → 15d | 16 → 9 |  |
| 30 | **Transition** | 2012-09-10 → 2012-10-01 (+21d) | 2012-10-05 → 2012-11-02 (+28d) | 20d → 25d |  |  |  |
| 31 | Execute Communications Plan | 2012-09-10 → 2012-10-01 (+21d) | 2012-09-13 → 2012-10-04 (+21d) |  | 16d → 21d | 25 → 20 |  |
| 32 | Execute Training Plan for User Community | 2012-09-10 → 2012-10-01 (+21d) | 2012-10-05 → 2012-10-26 (+21d) |  | 0d → 5d | 25 → 20 |  |

## Version 3 (saved 2012-04-10)

Note of the change: r1.4 pub/Operations/OSGPKIProjectWBS/OSG_PKI_Project_v0.1.mpp

Last finish 2013-11-05 → 2014-02-04 (+91d).

Added:

| ID | Task | Duration | Start | Finish | Predecessors |
| --- | --- | --- | --- | --- | --- |
| 36 | Stakeholder Readiness Review | 25d | 2012-12-20 | 2013-02-01 | 34, 35 |

Changed:

| ID | Task | Start | Finish | Duration | Total float | Predecessors |
| --- | --- | --- | --- | --- | --- | --- |
| 30 | **Transition** |  | 2012-11-02 → 2013-02-01 (+91d) | 25d → 80d |  |  |
| 34 | Regression test OSG functionality using new Certs |  | 2012-11-02 → 2012-12-19 (+47d) | 20d → 50d |  |  |
| 37 | **First Year of Operations** | 2012-11-05 → 2013-02-04 (+91d) | 2013-11-05 → 2014-02-04 (+91d) |  |  |  |
| 38 | Stop issueing new certs from DOEGrids | 2012-11-05 → 2013-02-04 (+91d) | 2012-11-05 → 2013-02-04 (+91d) |  |  |  |
| 39 | Start issueing new and renewal certs from DigiCert | 2012-11-05 → 2013-02-05 (+92d) | 2012-11-05 → 2013-02-05 (+92d) |  | 261d → 260d | 30 → 38 |
| 40 | "Drain" all active certs from DOEGrids CA | 2012-11-06 → 2013-02-05 (+91d) | 2013-11-04 → 2014-02-03 (+91d) |  |  |  |
| 41 | Shut off DEOGrid CA | 2013-11-05 → 2014-02-04 (+91d) | 2013-11-05 → 2014-02-04 (+91d) |  |  |  |

## Version 4 (saved 2012-04-13)

Note of the change: r1.5 pub/Operations/OSGPKIProjectWBS/OSG_PKI_Project_v0.1.mpp

Last finish 2014-02-04 → 2014-01-27 (-8d).

Added:

| ID | Task | Duration | Start | Finish | Predecessors |
| --- | --- | --- | --- | --- | --- |
| 7 | Define Contingency Plan (for the event that the DigiCert CA becomes unavailable) | 15d | 2012-04-23 | 2012-05-11 | 2 |
| 13 | Develop and package new CLI scripts | 10d | 2012-07-02 | 2012-07-13 | 12 |
| 42 | Continue issuing CRLs for DOEGrids Certs | 260d | 2013-01-28 | 2014-01-24 | 31 |

Removed: 15 Define Contingency Plan elements for the event that the DigiCert CA becomes unavailable; and conduct an OSG internal review

Changed:

| ID | Task | Start | Finish | Duration | Complete | Total float | Predecessors | Other |
| --- | --- | --- | --- | --- | --- | --- | --- | --- |
| 1 | **Planning Phase** | 2012-03-12 A |  |  | 0% → 13% |  |  |  |
| 2 | Development and Deployment Plan | 2012-03-12 A |  |  | 0% → 50% |  |  | was named Document Technical Plan |
| 8 | Baseline WBS and Timeline |  |  |  |  |  | 6, 2, 3, 4, 5 → 6, 2, 3, 4, 5, 7 |  |
| 10 | **Development Phase** |  | 2012-08-31 → 2012-09-07 (+7d) | 75d → 80d |  |  |  |  |
| 11 | **Develop the OSG CA web service front-end and integrate with the DigiCert CA** |  | 2012-08-10 → 2012-08-17 (+7d) | 60d → 65d |  |  |  |  |
| 14 | Review by the OSG software area of the resulting code and support documentation. | 2012-07-02 → 2012-07-16 (+14d) | 2012-07-13 → 2012-07-27 (+14d) |  |  |  | 12 → 12, 13 |  |
| 15 | Developer Testing of New Solutions | 2012-07-16 → 2012-07-30 (+14d) | 2012-08-10 → 2012-08-17 (+7d) | 20d → 15d |  |  |  |  |
| 17 | Conduct Acceptance Testing of System | 2012-08-13 → 2012-08-20 (+7d) | 2012-08-31 → 2012-09-07 (+7d) |  |  | 5d → 0d | 15 → 11 |  |
| 18 | Update Transition Plan | 2012-08-13 → 2012-08-20 (+7d) | 2012-08-15 → 2012-08-22 (+7d) |  |  | 17d → 12d | 15 → 11 |  |
| 19 | Update Training Plan | 2012-08-13 → 2012-08-20 (+7d) | 2012-08-15 → 2012-08-22 (+7d) |  |  | 17d → 12d | 15 → 11 |  |
| 20 | Update Communications Plan | 2012-08-13 → 2012-08-20 (+7d) | 2012-08-15 → 2012-08-22 (+7d) |  |  | 17d → 12d | 15 → 11 |  |
| 21 | **Deployment Phase** | 2012-08-13 → 2012-07-16 (-28d) |  | 35d → 55d |  |  |  |  |
| 22 | **Deploy the OSG CA - the OSG web front-end and operations components** | 2012-08-13 → 2012-07-16 (-28d) |  | 35d → 55d |  |  |  |  |
| 23 | Procure Hardware | 2012-08-13 → 2012-07-16 (-28d) | 2012-08-31 → 2012-08-03 (-28d) |  |  | 0d → 20d | 15 → 13 |  |
| 24 | New Server Setup | 2012-09-03 → 2012-08-06 (-28d) | 2012-09-07 → 2012-08-10 (-28d) |  |  | 0d → 20d |  |  |
| 27 | Execute Training Plan for OSG Staff | 2012-09-03 → 2012-09-10 (+7d) | 2012-09-21 → 2012-09-28 (+7d) |  |  | 5d → 0d |  |  |
| 28 | Implement changes to operational procedures, policy and other changes defined in the Planning phase. | 2012-09-03 → 2012-09-10 (+7d) | 2012-09-14 → 2012-09-21 (+7d) |  |  | 10d → 5d |  |  |
| 29 | Implement contingency Plan elements for the event that the DigiCert CA becomes unavailable | 2012-09-03 → 2012-09-10 (+7d) | 2012-09-14 → 2012-09-21 (+7d) |  |  | 10d → 5d |  |  |
| 30 | Transfer new software packages ownership to OSG Software team | 2012-09-03 → 2012-09-10 (+7d) | 2012-09-07 → 2012-09-14 (+7d) |  |  | 15d → 10d |  |  |
| 31 | **Transition** |  | 2013-02-01 → 2013-01-25 (-7d) | 80d → 75d |  |  |  |  |
| 32 | Complete Execution of Communications Plan |  |  |  |  | 76d → 71d |  | was named Execute Communications Plan |
| 37 | Management Readiness Review |  | 2013-02-01 → 2013-01-25 (-7d) | 25d → 20d |  |  |  | was named Stakeholder Readiness Review |
| 38 | **First Year of Operations** | 2013-02-04 → 2013-01-28 (-7d) | 2014-02-04 → 2014-01-27 (-8d) | 262d → 261d |  |  |  |  |
| 39 | Start issueing new and renewal certs from DigiCert | 2013-02-05 → 2013-01-28 (-8d) | 2013-02-05 → 2013-01-28 (-8d) |  |  |  | 41 → 31 |  |
| 40 | **"Drain" all active certs from DOEGrids CA** | 2013-02-05 → 2013-01-28 (-8d) | 2014-02-03 → 2014-01-24 (-10d) |  |  |  | 41 → none |  |
| 41 | Stop issueing new certs from DOEGrids | 2013-02-04 → 2013-01-28 (-7d) | 2013-02-04 → 2013-01-28 (-7d) |  |  | 0d → 259d |  |  |
| 43 | Shut off DEOGrid CA | 2014-02-04 → 2014-01-27 (-8d) | 2014-02-04 → 2014-01-27 (-8d) |  |  |  | 40 → 41, 42 |  |

## Version 5 (saved 2012-05-22)

Note of the change: r1.7 pub/Operations/OSGPKIProjectWBS/OSG_PKI_Project_v0.1.mpp

Last finish stays 2014-01-27. Complete tasks 0 → 1.

Added:

| ID | Task | Duration | Start | Finish | Predecessors |
| --- | --- | --- | --- | --- | --- |
| 36 | Perform test Audits with DigiCert | 5d | 2012-10-08 | 2012-10-12 | 34 |

Changed:

| ID | Task | Start | Finish | Complete | Total float |
| --- | --- | --- | --- | --- | --- |
| 1 | **Planning Phase** |  |  | 13% → 65% |  |
| 2 | Development and Deployment Plan |  |  | 50% → 70% | 0d → 3.75d |
| 4 | Document Transition Plan | 2012-04-23 A |  | 0% → 50% | 0d → 3.75d |
| 5 | Document Communications Plan | 2012-04-23 A |  | 0% → 80% | 5d → 8.75d |
| 6 | Document Training Plan | 2012-04-23 A | 2012-05-04 A | 0% → 100% | 5d → none |
| 7 | Define Contingency Plan (for the event that the DigiCert CA becomes unavailable) | 2012-04-23 A |  | 0% → 95% | 0d → 3.75d |
| 8 | Baseline WBS and Timeline | 2012-05-14 A |  | 0% → 75% |  |
| 9 | Finalize & Sign Contract between DigiCert & Indiana | 2012-04-23 A |  | 0% → 70% |  |

## Version 6 (saved 2012-05-25)

Note of the change: r1.8 pub/Operations/OSGPKIProjectWBS/OSG_PKI_Project_v0.1.mpp

Last finish stays 2014-01-27. Complete tasks 1 → 6.

Changed:

| ID | Task | Start | Finish | Complete | Total float |
| --- | --- | --- | --- | --- | --- |
| 1 | **Planning Phase** |  |  | 65% → 91% |  |
| 2 | Development and Deployment Plan |  | 2012-04-20 A | 70% → 100% | 3.75d → none |
| 3 | Document Acceptance Test Plan | 2012-04-23 A | 2012-05-11 A | 0% → 100% | 3.75d → none |
| 4 | Document Transition Plan |  | 2012-05-11 A | 50% → 100% | 3.75d → none |
| 5 | Document Communications Plan |  | 2012-05-04 A | 80% → 100% | 8.75d → none |
| 7 | Define Contingency Plan (for the event that the DigiCert CA becomes unavailable) |  |  | 95% → 50% | 3.75d → 4.5d |
| 8 | Baseline WBS and Timeline |  | 2012-05-18 A | 75% → 100% | 0d → none |
| 9 | Finalize & Sign Contract between DigiCert & Indiana |  |  | 70% → 85% |  |

## Version 7 (saved 2012-08-09)

Note of the change: r1.9 pub/Operations/OSGPKIProjectWBS/OSG_PKI_Project_v0.1.mpp

Last finish stays 2014-01-27. Complete tasks 6 → 7.

Added:

| ID | Task | Duration | Start | Finish | Predecessors | Constraint |
| --- | --- | --- | --- | --- | --- | --- |
| 19 | Understand and document impact of DN changes | 15d | 2012-08-20 A | 2012-09-07 | 11 |  |
| 31 | Gate Report for completion of Development/Deployment phase | 3d | 2012-09-26 | 2012-09-28 |  | start no earlier than 2012-09-26 |

Changed:

| ID | Task | Start | Finish | Duration | Complete | Total float | Predecessors | Other |
| --- | --- | --- | --- | --- | --- | --- | --- | --- |
| 1 | **Planning Phase** |  |  |  | 91% → 99% | 0d → 55.5d |  |  |
| 7 | Define Contingency Plan (for the event that the DigiCert CA becomes unavailable) |  |  |  | 50% → 90% | 4.5d → 60.5d |  |  |
| 9 | Finalize & Sign Contract between DigiCert & Indiana |  | 2012-05-18 A |  | 85% → 100% | 0d → none |  |  |
| 10 | **Development Phase** | 2012-05-21 A |  |  | 0% → 73% | 0d → 7d |  |  |
| 11 | **Develop the OSG CA web service front-end and integrate with the DigiCert CA** | 2012-05-21 A |  |  | 0% → 82% | 0d → 2d |  |  |
| 12 | Develop front-end software and associated documentation | 2012-05-21 A |  |  | 0% → 90% | 0d → 28.5d |  | was named Develop software and associated documentation |
| 13 | Develop and package new CLI scripts | 2012-07-02 A |  |  | 0% → 80% | 0d → 20.5d |  |  |
| 14 | Review by the OSG software area of the resulting code and support documentation. | 2012-07-16 A |  |  | 0% → 50% | 0d → 15.5d |  |  |
| 15 | Developer Testing of New Solutions | 2012-07-30 A |  |  | 0% → 90% | 0d → 2d |  |  |
| 16 | Define changes to operational procedures, policy and other changes defined in the Planning phase. | 2012-05-21 A |  |  | 0% → 75% | 65d → 72d |  |  |
| 17 | Conduct Acceptance Testing of System | 2012-08-20 A |  |  | 0% → 80% | 0d → 7d |  |  |
| 22 | **Deployment Phase** | 2012-07-16 A |  |  | 0% → 12% |  |  |  |
| 23 | **Deploy the OSG CA - the OSG web front-end and operations components** | 2012-07-16 A |  |  | 0% → 21% |  |  |  |
| 24 | Procure Hardware for redunduncy |  |  |  |  | 20d → 27.5d |  | was named Procure Hardware |
| 25 | New Server Setup for redundancy |  |  |  |  | 20d → 27.5d |  | was named New Server Setup |
| 26 | Install Software | 2012-09-10 A |  |  | 0% → 50% | 0d → 5d |  |  |
| 27 | Friendly User Testing | 2012-09-17 A |  |  | 0% → 50% |  |  |  |
| 28 | Develop and deploy training for OSG Staff | 2012-09-10 → 2012-08-23 (-18d) | 2012-09-28 → 2012-09-26 (-2d) | 15d → 25d |  | 0d → 2d | 10 → 20 | was named Execute Training Plan for OSG Staff |
| 29 | Implement changes to operational procedures, policy and other changes defined in the Planning phase. | 2012-09-10 A |  |  | 0% → 20% |  |  |  |
| 38 | Implement "early needed" contingency Plan elements for the event that the DigiCert CA becomes unavailable | 2012-09-10 → 2012-10-08 (+28d) | 2012-09-21 → 2012-11-09 (+49d) | 10d → 25d |  | 5d → 0d | 10 → 35 | was named Implement contingency Plan elements for the event that the DigiCert CA becomes unavailable |
| 39 | Test End-to-End Contingency Plan | 2012-10-08 → 2012-11-12 (+35d) | 2012-11-02 → 2012-12-19 (+47d) | 20d → 25d |  | 30d → 0d | 35 → 38 |  |

## Version 8 (saved 2012-09-12)

Note of the change: r1.10 pub/Operations/OSGPKIProjectWBS/OSG_PKI_Project_v0.1.mpp

Last finish stays 2014-01-27. Complete tasks 7 → 14.

Removed: 38 Implement "early needed" contingency Plan elements for the event that the DigiCert CA becomes unavailable; 39 Test End-to-End Contingency Plan

Changed:

| ID | Task | Start | Finish | Complete | Total float | Predecessors |
| --- | --- | --- | --- | --- | --- | --- |
| 10 | **Development Phase** |  |  | 73% → 93% | 7d → 9d |  |
| 11 | **Develop the OSG CA web service front-end and integrate with the DigiCert CA** |  |  | 82% → 94% | 2d → 8.5d |  |
| 13 | Develop and package new CLI scripts |  |  | 80% → 90% | 20.5d → 33.5d |  |
| 14 | Review by the OSG software area of the resulting code and support documentation. |  | 2012-07-27 A | 50% → 100% | 15.5d → none |  |
| 15 | Developer Testing of New Solutions |  | 2012-08-17 A | 90% → 100% | 2d → none |  |
| 16 | Define changes to operational procedures, policy and other changes defined in the Planning phase. |  | 2012-06-08 A | 75% → 100% | 72d → none |  |
| 17 | Conduct Acceptance Testing of System |  | 2012-09-07 A | 80% → 100% | 7d → none |  |
| 18 | Update Transition Plan | 2012-08-20 A | 2012-08-22 A | 0% → 100% | 19d → none |  |
| 19 | Understand and document impact of DN changes |  |  | 67% → 80% | 7d → 9d |  |
| 20 | Update Training Plan | 2012-08-20 A |  | 0% → 50% | 2d → 7d |  |
| 21 | Update Communications Plan | 2012-08-20 A | 2012-08-22 A | 0% → 100% | 19d → none |  |
| 22 | **Deployment Phase** |  |  | 12% → 27% |  |  |
| 23 | **Deploy the OSG CA - the OSG web front-end and operations components** |  |  | 21% → 29% |  |  |
| 26 | Install Software |  | 2012-09-14 A | 50% → 100% | 5d → none |  |
| 28 | Develop and deploy training for OSG Staff | 2012-08-23 A |  | 0% → 20% |  |  |
| 29 | Implement changes to operational procedures, policy and other changes defined in the Planning phase. |  |  | 20% → 40% |  |  |
| 30 | Transfer new software packages ownership to OSG Software team | 2012-09-10 A |  | 0% → 40% |  |  |
| 38 | Management Readiness Review |  |  |  |  | 36, Test End-to-End Contingency Plan → 36 |

## Version 9 (saved 2012-11-08)

Note of the change: r1.11 pub/Operations/OSGPKIProjectWBS/OSG_PKI_Project_v0.1.mpp

Last finish stays 2014-01-27. Complete tasks 14 → 23.

Removed: 24 Procure Hardware for redunduncy; 25 New Server Setup for redundancy

Changed:

| ID | Task | Start | Finish | Duration | Complete | Total float | Predecessors |
| --- | --- | --- | --- | --- | --- | --- | --- |
| 1 | **Planning Phase** |  | 2012-05-18 A |  | 99% → 100% | 69.5d → none |  |
| 7 | Define Contingency Plan (for the event that the DigiCert CA becomes unavailable) |  | 2012-05-11 A |  | 90% → 100% | 60.5d → none |  |
| 10 | **Development Phase** |  |  |  | 93% → 99% | 9d → 84.8d |  |
| 11 | **Develop the OSG CA web service front-end and integrate with the DigiCert CA** |  |  |  | 94% → 98% | 8.5d → 99.8d |  |
| 12 | Develop front-end software and associated documentation |  |  |  | 90% → 95% | 42.5d → 134.8d |  |
| 13 | Develop and package new CLI scripts |  | 2012-07-13 A |  | 90% → 100% | 33.5d → none |  |
| 19 | Understand and document impact of DN changes |  | 2012-09-07 A |  | 80% → 100% | 9d → none |  |
| 20 | Update Training Plan |  | 2012-08-22 A |  | 50% → 100% | 7d → none |  |
| 22 | **Deployment Phase** | 2012-07-16 A → 2012-08-23 A (+38d) |  | 55d → 27d | 27% → 95% | 0d → 71.8d |  |
| 23 | **Deploy the OSG CA - the OSG web front-end and operations components** | 2012-07-16 A → 2012-09-10 A (+56d) | 2012-09-28 A | 55d → 15d | 29% → 100% | 0d → none |  |
| 24 | Install Software |  |  |  |  |  | 17, New Server Setup for redundancy → 17 |
| 25 | Friendly User Testing |  | 2012-09-28 A |  | 50% → 100% | 0d → none |  |
| 26 | Develop and deploy training for OSG Staff |  | 2012-09-26 A |  | 20% → 100% | 2d → none |  |
| 27 | Implement changes to operational procedures, policy and other changes defined in the Planning phase. |  |  |  | 40% → 80% | 5d → 76.8d |  |
| 28 | Transfer new software packages ownership to OSG Software team |  |  |  | 40% → 80% | 10d → 81.8d |  |
| 29 | Gate Report for completion of Development/Deployment phase | 2012-09-26 A | 2012-09-28 A |  | 0% → 100% | 0d → none |  |
| 30 | **Transition** | 2012-10-01 A |  |  | 0% → 49% |  |  |
| 31 | Complete Execution of Communications Plan | 2012-10-01 A |  |  | 0% → 20% |  |  |
| 32 | Execute Training Plan for User Community | 2012-10-01 A | 2012-10-26 A |  | 0% → 100% | 55d → none |  |
| 33 | Issue DigiCerts certs for "friendly" user community | 2012-10-01 A | 2012-10-05 A |  | 0% → 100% | 0d → none |  |
| 34 | Regression test OSG functionality using new Certs | 2012-10-08 A |  |  | 0% → 50% |  |  |
| 37 | **First Year of Operations** | 2013-01-28 A |  |  |  |  |  |
| 38 | Start issueing new and renewal certs from DigiCert | 2013-01-28 A |  |  | 0% → 5% |  |  |

## Version 10 (saved 2013-02-14)

Note of the change: r1.12 pub/Operations/OSGPKIProjectWBS/OSG_PKI_Project_v0.1.mpp

Last finish 2014-01-27 → 2014-03-24 (+56d). Complete tasks 23 → 28.

Added:

| ID | Task | Duration | Start | Finish | Predecessors | Constraint |
| --- | --- | --- | --- | --- | --- | --- |
| 39 | Update SLA for OIM | 10d | 2013-02-15 | 2013-02-28 | 30 | finish no earlier than 2013-02-28 |

Changed:

| ID | Task | Start | Finish | Duration | Complete | Total float | Other |
| --- | --- | --- | --- | --- | --- | --- | --- |
| 10 | **Development Phase** |  | 2012-09-07 A |  | 99% → 100% | 84.8d → none |  |
| 11 | **Develop the OSG CA web service front-end and integrate with the DigiCert CA** |  | 2012-08-17 A |  | 98% → 100% | 99.8d → none |  |
| 12 | Develop front-end software and associated documentation |  | 2012-06-29 A |  | 95% → 100% | 134.8d → none |  |
| 22 | **Deployment Phase** |  |  |  | 95% → 99% | 71.8d → 376d |  |
| 27 | Implement changes to operational procedures, policy and other changes defined in the Planning phase. |  | 2012-09-21 A |  | 80% → 100% | 76.8d → none |  |
| 28 | Transfer new software packages ownership to OSG Software team |  |  |  | 80% → 95% | 81.8d → 386d |  |
| 30 | **Transition** |  |  |  | 49% → 89% | 0d → 30d |  |
| 31 | Complete Execution of Communications Plan |  | 2012-10-04 A |  | 20% → 100% | 71d → none |  |
| 34 | Regression test OSG functionality using new Certs |  | 2012-12-19 A |  | 50% → 100% | 0d → none |  |
| 35 | Perform test Audits with DigiCert | 2012-10-08 A |  |  | 0% → 25% | 65d → 95d |  |
| 36 | Management Readiness Review | 2012-12-20 A |  |  | 0% → 60% | 0d → 30d |  |
| 37 | **First Year of Operations** |  | 2014-01-27 → 2014-03-24 (+56d) | 261d → 301d | 0% → 10% |  |  |
| 38 | Start issueing new and renewal certs from DigiCert |  | 2013-01-28 A |  | 5% → 100% | 260d → none |  |
| 40 | **"Drain" all active certs from DOEGrids CA** | 2013-01-28 A | 2014-01-24 → 2014-03-23 (+58d) | 260d → 300d | 0% → 10% |  |  |
| 41 | Stop issueing new certs from DOEGrids | 2013-01-28 A | 2013-01-28 → 2013-03-23 (+54d) | 1d → 40d | 0% → 10% | 259d → 260d | constraint none → finish no earlier than 2013-03-23 |
| 42 | Continue issuing CRLs for DOEGrids Certs | 2013-01-28 A | 2014-01-24 → 2014-03-23 (+58d) | 260d → 300d | 0% → 10% |  | constraint none → finish no earlier than 2014-03-23 |
| 43 | Shut off DEOGrid CA | 2014-01-27 → 2014-03-24 (+56d) | 2014-01-27 → 2014-03-24 (+56d) |  |  |  | constraint none → finish no earlier than 2014-03-23 |
